# Ballymore VCL Works Programme Rev 1

Schedule from MS Project, 2021-03-18 to 2021-08-27.

## Calendars

- Standard: Mon-Fri 08:00-12:00, 13:00-17:00; Sat-Sun off. Exceptions (off unless hours are given): 2021-04-03 to 2021-04-05 (Easter).

## Schedule

| ID | WBS | Task | Duration | Start | Finish | Predecessors | Total slack | Constraint |
| --- | --- | --- | --- | --- | --- | --- | --- | --- |
| 1 | 1 | **20:20 VCL Works** | 116d | 2021-03-18 | 2021-08-27 |  | 0d |  |
| 2 | 1.1 | **Phase Two - Ballymore Start & Finish** | 66d | 2021-03-18 | 2021-06-18 |  | 36d |  |
| 3 | 1.1.1 | Flat 239 - Apartment 1 | 1w | 2021-03-18 | 2021-03-24 |  | 106d | start no earlier than 2021-03-18 |
| 4 | 1.1.2 | Flat 242 - Apartment 3 | 2w | 2021-05-10 | 2021-05-21 |  | 0d | start no earlier than 2021-05-10 |
| 5 | 1.1.3 | Flat 241 - Apartment 4 | 2w | 2021-05-10 | 2021-05-21 |  | 0d | start no earlier than 2021-05-10 |
| 6 | 1.1.4 | Flat 235 - Apartment 5 | 2w | 2021-05-24 | 2021-06-04 | 4, 5 | 0d |  |
| 7 | 1.1.5 | Flat 236 - Apartment 6 | 2w | 2021-05-24 | 2021-06-04 | 4, 5 | 0d |  |
| 8 | 1.1.6 | Flat 237 - Apartment 7 | 2w | 2021-06-07 | 2021-06-18 | 6, 7 | 0d |  |
| 9 | 1.1.7 | Flat 238 - Apartment 8 | 2w | 2021-06-07 | 2021-06-18 | 6, 7 | 0d |  |
| 10 | 1.2 | **Phase Three - Ballymore Start & Finish** | 50d | 2021-06-21 | 2021-08-27 |  | 0d |  |
| 11 | 1.2.1 | Flat 123 - Apartment 9 | 2w | 2021-06-21 | 2021-07-02 | 8, 9 | 0d |  |
| 12 | 1.2.2 | Flat 124 - Apartment 10 | 2w | 2021-06-21 | 2021-07-02 | 8, 9 | 0d |  |
| 13 | 1.2.3 | Flat 125 - Apartment 11 | 2w | 2021-07-05 | 2021-07-16 | 11, 12 | 0d |  |
| 14 | 1.2.4 | Flat 128 - Apartment 12 | 2w | 2021-07-05 | 2021-07-16 | 11, 12 | 0d |  |
| 15 | 1.2.5 | Flat 126 - Apartment 13 | 2w | 2021-07-19 | 2021-07-30 | 13, 14 | 0d |  |
| 16 | 1.2.6 | Flat 127 - Apartment 14 | 2w | 2021-07-19 | 2021-07-30 | 13, 14 | 0d |  |
| 17 | 1.2.7 | Flat 129 - Apartment 15 | 2w | 2021-08-02 | 2021-08-13 | 15, 16 | 0d |  |
| 18 | 1.2.8 | Flat 121 - Apartment 16 | 2w | 2021-08-02 | 2021-08-13 | 15, 16 | 0d |  |
| 19 | 1.2.9 | Flat 122 - Apartment 17 | 2w | 2021-08-16 | 2021-08-27 | 17, 18 | 0d |  |
| 20 | 1.2.10 | Flat 240 - Apartment 2 | 2w | 2021-08-16 | 2021-08-27 | 17, 18 | 0d | start no earlier than 2021-03-29 |
